# Plan de fase

Schedule from MS Project, 2008-10-01 to 2009-05-27, 4 hours a day.
FdI (UCM)

## Calendars

- Estándar: Mon-Fri 16:00-18:00, 18:00-20:00; Sat-Sun off. Exceptions (off unless hours are given): 2008-10-31 09:00-13:00, 15:00-19:00, 2008-11-19, 2008-12-08 09:00-13:00, 15:00-19:00, 2008-12-22 to 2008-12-27, 2008-12-28 09:00-13:00, 15:00-19:00, 2008-12-29 to 2009-01-07, 2009-01-28 09:00-13:00, 15:00-19:00, 2009-01-29 to 2009-01-31, 2009-02-02 to 2009-02-14, 2009-03-14 09:00-13:00, 15:00-19:00.

## Resources

| Resource |
| --- |
| Francisco Huertas Ferrer |
| Gabriela Ruiz Escobar |
| Alberto Milán |
| Ambrin Chaudhary |
| David de la Fuente González |
| Alberto Fernández |
| Javier García |
| Santiago Zomeño Alcalá |
| David Fernandez |
| David Hernández Plaza |
| Jaime Guimera Coll |
| Joaquin López Cabezas |
| Eclipse |
| NetBeans |
| Subversión |
| Gonzalo Mendez - Cliente - Director de Proyecto |
| Gonz.. |

## Schedule

| ID | WBS | Task | Duration | Start | Finish | Predecessors | Total slack | Free slack | Constraint | Resources | Work |
| --- | --- | --- | --- | --- | --- | --- | --- | --- | --- | --- | --- |
| 1 | 1 | **Fase Inicio (viabilidad)** | 12.15d? | 2008-10-01 | 2008-10-17 |  | 12.5d | 0.25d |  | Gonzalo Mendez - Cliente - Director de Proyecto | 667.61h |
| 2 | 1.1 | Propuestas | 7.15d? | 2008-10-01 | 2008-10-10 |  | 43.5d | 0.25d | finish no earlier than 2008-10-10 | Francisco Huertas Ferrer; Gabriela Ruiz Escobar; Alberto Milán; Ambrin Chaudhary; David de la Fuente González; Alberto Fernández; Javier García; Santiago Zomeño Alcalá; David Fernandez; David Hernández Plaza; Jaime Guimera Coll; Joaquin López Cabezas; Gonzalo Mendez - Cliente - Director de Proyecto | 372h |
| 3 | 1.2 | Viabilidad y elecc. Alternativa | 8d? | 2008-10-13 | 2008-10-17 | 2 | 43.25d | 0.25d | start no earlier than 2008-10-13 | Francisco Huertas Ferrer; Gabriela Ruiz Escobar; Alberto Milán; Ambrin Chaudhary; David de la Fuente González; Alberto Fernández; Javier García; Santiago Zomeño Alcalá; David Fernandez; David Hernández Plaza; Jaime Guimera Coll; Joaquin López Cabezas; Gonz.. | 247h |
| 4 | 2 | **Fase de Elaboración** | 64d? | 2008-10-20 | 2009-01-28 | 1 | 11.5d | 1d |  |  | 5343.7h |
| 5 | 2.1 | **1ª Iteración** | 20.75d? | 2008-10-20 | 2008-11-14 |  | 12d | 0.25d |  |  | 1051.7h |
| 6 | 2.1.1 | Espec.requisit.:Introduc.,descripc.gral. | 7.25d? | 2008-10-20 | 2008-10-24 | 3 | 12.25d | 0.25d | finish no earlier than 2008-10-24 | Francisco Huertas Ferrer; Gabriela Ruiz Escobar; Alberto Milán; Ambrin Chaudhary; David de la Fuente González; Alberto Fernández; Javier García; Santiago Zomeño Alcalá; David Fernandez; David Hernández Plaza; Jaime Guimera Coll; Joaquin López Cabezas; Gonz.. | 247h |
| 7 | 2.1.2 | Casos de Uso | 9.75d? | 2008-10-27 | 2008-10-31 | 6 | 42.75d | 0d | start no earlier than 2008-10-27 | Francisco Huertas Ferrer; Gabriela Ruiz Escobar; Alberto Milán; Ambrin Chaudhary; David de la Fuente González; Alberto Fernández; Javier García; Santiago Zomeño Alcalá; David Fernandez; David Hernández Plaza; Jaime Guimera Coll; Joaquin López Cabezas; Gonz.. | 312h |
| 8 | 2.1.3 | Espec.requisit. (continuación) :requisit.funcionales | 13.68d? | 2008-11-03 | 2008-11-14 | 7 | 42.75d | 0.25d | finish no earlier than 2008-11-14 | Francisco Huertas Ferrer; Gabriela Ruiz Escobar; Ambrin Chaudhary; David de la Fuente González; Javier García; Santiago Zomeño Alcalá; David Hernández Plaza; Jaime Guimera Coll; Joaquin López Cabezas; Gonz.. | 375.7h |
| 9 | 2.1.4 | Gestión de riesgos | 9.75d? | 2008-11-03 | 2008-11-14 | 7 | 42.75d |  | start no earlier than 2008-11-03 | Alberto Milán; Alberto Fernández; David Fernandez | 117h |
| 10 | 2.2 | **2ª Iteración** | 23.75d? | 2008-11-17 | 2008-12-18 | 5 | 11.75d | 0.25d |  |  | 2068h |
| 11 | 2.2.1 | Entorno desarrollo (Eclipse,Netbeans,Subversion) | 3.75d? | 2008-11-17 | 2008-11-21 |  | 62.5d |  | start no earlier than 2008-11-17 | Alberto Milán | 15h |
| 12 | 2.2.2 | **Prototipo** | 23.75d? | 2008-11-17 | 2008-12-18 | 8 | 11.75d | 0.25d |  | Ambrin Chaudhary; Javier García; David Hernández Plaza; Jaime Guimera Coll; Joaquin López Cabezas | 1805h |
| 13 | 2.2.2.1 | **Aplicación/demo** | 23.75d? | 2008-11-17 | 2008-12-18 |  | 11.75d |  |  | Ambrin Chaudhary; Javier García; David Hernández Plaza; Jaime Guimera Coll; Joaquin López Cabezas | 1140h |
| 14 | 2.2.2.1.1 | Montaje servidor | 23.75d? | 2008-11-17 | 2008-12-18 |  | 42.5d |  | start no earlier than 2008-11-17 | David Fernandez | 95h |
| 15 | 2.2.2.1.2 | Bases de datos | 23.75d? | 2008-11-17 | 2008-12-18 |  | 42.5d |  | start no earlier than 2008-11-17 | Alberto Fernández | 95h |
| 16 | 2.2.2.1.3 | Portal web | 23.75d? | 2008-11-17 | 2008-12-18 |  | 42.5d |  | start no earlier than 2008-11-17 | Javier García; David Hernández Plaza | 190h |
| 17 | 2.2.2.1.4 | Aplicación-cliente ejecutable | 23.75d? | 2008-11-17 | 2008-12-18 |  | 42.5d |  | start no earlier than 2008-11-17 | Ambrin Chaudhary; Jaime Guimera Coll; Joaquin López Cabezas | 285h |
| 18 | 2.2.2.2 | Pruebas Sockets (comunicación cliente/servidor) | 23.75d? | 2008-11-17 | 2008-12-18 |  | 42.5d |  | start no earlier than 2008-11-17 | Gabriela Ruiz Escobar; Francisco Huertas Ferrer | 190h |
| 19 | 2.2.3 | Plan Gest. de Conf. Sw. | 19.75d? | 2008-11-24 | 2008-12-18 |  | 42.5d | 0.25d | start no earlier than 2008-11-24 | Alberto Milán | 79h |
| 20 | 2.2.4 | Revisión-Casos uso | 5.75d? | 2008-12-11 | 2008-12-18 |  | 42.5d | 0.25d | start no earlier than 2008-12-11 | David de la Fuente González | 23h |
| 21 | 2.2.5 | Revisión-Especificación requisitos | 5.75d? | 2008-12-11 | 2008-12-18 |  | 42.5d | 0.25d | start no earlier than 2008-12-11 | David Fernandez | 23h |
| 22 | 2.2.6 | Revisión-Gestión de riesgos | 5.75d? | 2008-12-11 | 2008-12-18 |  | 42.5d | 0.25d | start no earlier than 2008-12-11 | Alberto Fernández | 23h |
| 23 | 2.2.7 | Planificación | 6.75d? | 2008-12-10 | 2008-12-18 |  | 42.5d |  | start no earlier than 2008-12-10 | Gabriela Ruiz Escobar; Santiago Zomeño Alcalá | 54h |
| 24 | 2.2.8 | Presentación (montaje/traducción/coordinación) | 5.75d? | 2008-12-11 | 2008-12-18 |  | 42.5d |  | start no earlier than 2008-12-11 | Gabriela Ruiz Escobar; Santiago Zomeño Alcalá | 46h |

| ID | WBS | Task | Duration | Start | Finish | Predecessors | Total slack | Free slack | Constraint | Resources | Work |
| --- | --- | --- | --- | --- | --- | --- | --- | --- | --- | --- | --- |
| 25 | 2.3 | **3ª Iteración** | 19d? | 2008-12-19 | 2009-01-28 | 10 | 11.5d |  |  |  | 2224h |
| 26 | 2.3.1 | Arquitectura sistema | 17d? | 2008-12-19 | 2009-01-27 | 12, 19, 20, 21, 22, 11 | 44.25d |  | start no earlier than 2008-12-19 | Francisco Huertas Ferrer; Gabriela Ruiz Escobar; Alberto Milán; Ambrin Chaudhary; David de la Fuente González; Alberto Fernández; Javier García; Santiago Zomeño Alcalá; David Fernandez; David Hernández Plaza; Jaime Guimera Coll; Joaquin López Cabezas; Gonzalo Mendez - Cliente - Director de Proyecto | 884h |
| 27 | 2.3.2 | Inicio desarrollo aplicación | 17d? | 2008-12-19 | 2009-01-27 |  | 44.25d |  | start no earlier than 2008-12-19 | Francisco Huertas Ferrer; Gabriela Ruiz Escobar; Alberto Milán; Ambrin Chaudhary; David de la Fuente González; Alberto Fernández; Javier García; Santiago Zomeño Alcalá; David Fernandez; David Hernández Plaza; Jaime Guimera Coll; Joaquin López Cabezas; Gonzalo Mendez - Cliente - Director de Proyecto | 884h |
| 28 | 2.3.3 | Revisión-Casos de Uso | 19d? | 2008-12-19 | 2009-01-28 |  | 42.25d |  | start no earlier than 2008-12-19 | David de la Fuente González | 76h |
| 29 | 2.3.4 | Revisión-Especificación de Requisitos | 19d? | 2008-12-19 | 2009-01-28 |  | 42.25d |  | start no earlier than 2008-12-19 | David Fernandez | 76h |
| 30 | 2.3.5 | Revisión-Gestión de Riesgos | 19d? | 2008-12-19 | 2009-01-28 |  | 42.25d |  | start no earlier than 2008-12-19 | Alberto Fernández | 76h |
| 31 | 2.3.6 | Revisión-Gest. Conf. Sw. | 19d? | 2008-12-19 | 2009-01-28 |  | 11.5d |  | finish no earlier than 2009-01-28 | Alberto Milán | 76h |
| 32 | 2.3.7 | Revisión-Planificación | 19d? | 2008-12-19 | 2009-01-28 |  | 11.5d |  | finish no earlier than 2009-01-28 | Gabriela Ruiz Escobar; Santiago Zomeño Alcalá | 152h |
| 33 | 3 | **Fase de Construcción** | 68.75d? | 2009-02-17 | 2009-05-20 | 4 | 0.5d | 0.25d |  |  |  |
| 34 | 3.1 | **1ª Iteración: diseño e implementación Casino Online (con juego 1)** | 68.75d? | 2009-02-17 | 2009-05-20 |  | 0.5d |  |  |  |  |
| 35 | 3.1.1 | Presentación arquitectura | 3.75d? | 2009-02-17 | 2009-02-20 |  | 62.25d |  | start no earlier than 2009-02-17 |  |  |
| 36 | 3.1.2 | Revisión documentación (esp.req.,c.uso,gest.riesgos,planif.,arquit.) | 5.75d? | 2009-02-20 | 2009-02-27 |  | 57.25d |  | start no earlier than 2009-02-20 |  |  |
| 37 | 3.1.3 | **Diseño Casino Online (y parte de la implementación)** | 59.75d? | 2009-03-02 | 2009-05-20 |  | 0.5d |  |  |  |  |
| 38 | 3.1.3.1 | Revisión/ampliación C.Uso | 59.75d? | 2009-03-02 | 2009-05-20 |  | 1.5d |  | finish no earlier than 2009-05-20 |  |  |
| 39 | 3.1.3.2 | Glosario | 59.75d? | 2009-03-02 | 2009-05-20 |  | 1.5d |  | finish no earlier than 2009-05-20 |  |  |
| 40 | 3.1.3.3 | Diagramas de secuencia: comunicaciones, aplic. serv. Web, chat, BD | 59.75d? | 2009-03-02 | 2009-05-20 |  | 1.5d |  | finish no earlier than 2009-05-20 |  |  |
| 41 | 3.1.3.4 | Modelo de Dominio | 59.75d? | 2009-03-02 | 2009-05-20 |  | 1.5d |  | finish no earlier than 2009-05-20 |  |  |
| 42 | 3.1.3.5 | Contratos de Operaciones | 59.75d? | 2009-03-02 | 2009-05-20 |  | 1.5d |  | finish no earlier than 2009-05-20 |  |  |
| 43 | 3.1.3.6 | **Casos de Uso Reales** | 59.75d? | 2009-03-02 | 2009-05-20 |  | 0.5d |  |  |  |  |
| 44 | 3.1.3.6.1 | Diagramas de Interacción | 59.75d? | 2009-03-02 | 2009-05-20 |  | 1.5d |  | finish no earlier than 2009-05-20 |  |  |
| 45 | 3.1.3.6.2 | Diagramas de Clases: comunicaciones, juegos, chat, BD | 59.75d? | 2009-03-02 | 2009-05-20 |  | 1.5d |  | finish no earlier than 2009-05-20 |  |  |
| 46 | 3.1.3.6.3 | Diagramas de Estados | 59.75d? | 2009-03-02 | 2009-05-20 |  | 1.5d |  | finish no earlier than 2009-05-20 |  |  |
| 47 | 3.1.3.6.4 | Diagr.Actividades | 59.75d? | 2009-03-02 | 2009-05-20 |  | 1.5d |  | finish no earlier than 2009-05-20 |  |  |
| 48 | 3.1.3.7 | Implementación: aplicación serv. Web | 59.75d? | 2009-03-02 | 2009-05-20 |  | 1.5d |  | finish no earlier than 2009-05-20 |  |  |
| 49 | 3.2 | Revisión documentación (esp.req.,c.uso,gest.riesgos,planif.,arquit.) | 5.75d? | 2009-05-13 | 2009-05-20 |  | 0.5d |  | finish no earlier than 2009-05-20 |  |  |

| ID | WBS | Task | Duration | Start | Finish | Predecessors | Total slack | Constraint |
| --- | --- | --- | --- | --- | --- | --- | --- | --- |
| 50 | 4 | **Fase de Transición** | 5d? | 2009-05-21 | 2009-05-27 | 33 | 0d |  |
| 51 | 4.1 | Despliegue y pruebas | 0.75d? | 2009-05-21 | 2009-05-21 |  | 4.25d | finish no earlier than 2009-05-21 |
| 52 | 4.2 | Revisión técnica formal | 0.75d? | 2009-05-22 | 2009-05-22 |  | 3.25d | start no earlier than 2009-05-22 |
| 53 | 4.3 | Corrección errores/sugerencias | 4.75d? | 2009-05-21 | 2009-05-27 |  | 0.25d | start no earlier than 2009-05-21 |
| 54 | 4.4 | Integración documentación: documento final | 3.75d? | 2009-05-22 | 2009-05-27 |  | 0.25d | finish no earlier than 2009-05-27 |
| 55 | 4.5 | Presentación final | 1d? | 2009-05-27 | 2009-05-27 |  | 0d | start no earlier than 2009-05-27 |
